# MedTrack - Projektzeitplan

Schedule from MS Project, 2026-09-07 to 2027-01-25, A marks actual dates.
HTL Krems

## Calendars

- Standard: Mon 08:00-11:00; Tue-Thu off; Fri 08:00-09:00; Sat-Sun off. Exceptions (off unless hours are given): 2026-10-26 to 2026-11-02 (Herbstferien), 2026-12-08 (Mariä Empfängnis), 2026-12-24 to 2027-01-06 (Weihnachtsferien).

## Resources

| Resource |
| --- |
| Julian |
| Alexander |
| Leon |

## Schedule

| ID | WBS | Task | Type | Duration | Start | Finish | Predecessors | Complete | Resources | Work | Actual work |
| --- | --- | --- | --- | --- | --- | --- | --- | --- | --- | --- | --- |
| 1 | 1 | Projektidee festlegen & beschreiben | manual | 1.38d | 2026-09-07 08:00 A | 2026-09-21 11:00 A |  | 100% | Julian; Alexander; Leon | 33h | 33h |
| 2 | 2 | M1 Projektidee fixiert | milestone, manual | 0d | 2026-09-21 11:00 | 2026-09-21 11:00 | 1 |  |  |  |  |
| 3 | 3 | Kommunikationsverzeichnis erstellen | manual | 0.12d | 2026-09-25 08:00 A | 2026-09-25 09:00 A | 2 | 100% | Alexander | 1h | 1h |
| 4 | 4 | Entwicklungsumgebung einrichten | manual | 0.12d | 2026-09-28 08:00 A | 2026-09-28 09:00 A | 2 | 100% | Julian; Alexander; Leon | 3h | 3h |
| 5 | 5 | Pflichtenheft erstellen | manual | 0.88d | 2026-09-28 09:00 A | 2026-10-09 09:00 A | 2 | 100% | Alexander; Leon | 14h | 14h |
| 6 | 6 | Projektanalyse durchführen | manual | 0.88d | 2026-09-28 09:00 A | 2026-10-09 09:00 A | 2 | 100% | Julian | 7h | 7h |
| 7 | 7 | Produkt- & Objektstrukturplan erstellen | manual | 0.5d | 2026-10-12 08:00 A | 2026-10-16 09:00 A | 5 | 100% | Alexander | 4h | 4h |
| 8 | 8 | BLE-Tags auswählen & bestellen | manual | 0.5d | 2026-10-12 08:00 A | 2026-10-16 09:00 A | 5 | 100% | Leon | 4h | 4h |
| 9 | 9 | PSP & Arbeitspakete erstellen | manual | 0.38d | 2026-10-19 08:00 A | 2026-10-19 11:00 A | 7 | 100% | Julian | 3h | 3h |
| 10 | 10 | Projektzeitplan in MS Project erstellen | manual | 0.12d | 2026-10-23 08:00 A | 2026-10-23 09:00 A | 9 | 100% | Julian | 1h | 1h |
| 11 | 11 | M2 Planung abgeschlossen | milestone, manual | 0d | 2026-10-23 09:00 | 2026-10-23 09:00 | 3, 6, 10, 8, 4 |  |  |  |  |
| 13 | 12 | BLE-Tags konfigurieren | manual | 0.12d | 2026-11-23 08:00 | 2026-11-23 09:00 | 11 |  | Leon | 1h |  |
| 14 | 13 | BLE-Scan & RSSI-Messung programmieren | manual | 0.62d | 2026-11-23 08:00 | 2026-11-30 09:00 | 11 |  | Alexander | 5h |  |
| 15 | 14 | Empfänger montieren & Positionen vermessen | manual | 0.38d | 2026-11-23 09:00 | 2026-11-27 09:00 | 11 |  | Leon | 3h |  |
| 16 | 15 | M3 Hardware einsatzbereit | milestone, manual | 0d | 2026-11-30 11:00 | 2026-11-30 11:00 | 13, 14 |  |  |  |  |
| 17 | 16 | Referenzmessungen durchführen | manual | 0.5d | 2026-12-04 08:00 | 2026-12-07 11:00 | 15, 16 |  | Alexander; Leon | 8h |  |
| 18 | 17 | TxPower & n bestimmen, Messprotokoll erstellen | manual | 0.12d | 2026-12-11 08:00 | 2026-12-11 09:00 | 17 |  | Alexander | 1h |  |
| 19 | 18 | WLAN & HTTP-Übertragung programmieren | manual | 0.25d | 2026-11-30 09:00 | 2026-11-30 11:00 | 14 |  | Alexander | 2h |  |
| 20 | 19 | M4 Ortung kalibriert | milestone, manual | 0d | 2026-12-11 09:00 | 2026-12-11 09:00 | 18 |  |  |  |  |
| 22 | 20 | Datenbankmodell & Init-Skript erstellen | manual | 0.38d | 2026-11-16 08:00 | 2026-11-16 11:00 | 11 |  | Julian | 3h |  |
| 23 | 21 | Docker-Umgebung aufsetzen | manual | 0.12d | 2026-11-20 08:00 | 2026-11-20 09:00 | 11 |  | Julian | 1h |  |
| 24 | 22 | Backend: Anmeldung & Rollen | manual | 0.38d | 2026-11-23 08:00 | 2026-11-23 11:00 | 22, 23 |  | Julian | 3h |  |
| 25 | 23 | Backend: Geräteverwaltung & Suche | manual | 0.38d | 2026-11-27 08:00 | 2026-11-30 10:00 | 24 |  | Julian | 3h |  |
| 26 | 24 | Backend: Ausleihe, Rückgabe & Historie | manual | 0.25d | 2026-11-30 10:00 | 2026-12-04 09:00 | 25 |  | Julian | 2h |  |
| 27 | 25 | Backend: Kalender & Benutzerverwaltung | manual | 0.12d | 2026-12-07 08:00 | 2026-12-07 09:00 | 26 |  | Julian | 1h |  |
| 28 | 26 | Frontend: HTML-Struktur & Layout | manual | 0.12d | 2026-11-06 08:00 A | 2026-11-06 09:00 A | 11 | 100% | Leon | 1h | 1h |
| 29 | 27 | Frontend: Design mit CSS | manual | 0.25d | 2026-11-09 08:00 A | 2026-11-09 10:00 A | 28 | 100% | Leon | 2h | 2h |
| 30 | 28 | Frontend: JavaScript-Grundlogik | manual | 0.12d | 2026-11-09 10:00 A | 2026-11-09 11:00 A | 29 | 100% | Leon | 1h | 1h |
| 31 | 29 | Frontend: Seiten Anmeldung, Geräte & Ausleihe | manual | 0.12d | 2026-11-13 08:00 A | 2026-11-13 09:00 A | 30 | 100% | Leon | 1h | 1h |
| 32 | 30 | M5 Webanwendung fertig | milestone, manual | 0d | 2026-12-14 11:00 | 2026-12-14 11:00 | 27, 31 |  |  |  |  |
| 34 | 31 | Schnittstelle location.php umsetzen | manual | 0.25d | 2026-12-07 09:00 | 2026-12-07 11:00 | 19, 22 |  | Julian | 2h |  |
| 35 | 32 | RSSI-Umrechnung implementieren | manual | 0.12d | 2026-12-14 08:00 | 2026-12-14 09:00 | 20, 34 |  | Julian | 1h |  |
| 36 | 33 | Raumkarte im Dashboard anzeigen | manual | 0.38d | 2026-12-11 08:00 | 2026-12-14 10:00 | 34, 31 |  | Leon | 3h |  |
| 37 | 34 | Trilateration programmieren | manual | 0.25d | 2026-12-14 09:00 | 2026-12-14 11:00 | 35 |  | Alexander | 2h |  |
| 38 | 35 | Standortverlauf speichern | manual | 0.12d | 2026-12-18 08:00 | 2026-12-18 09:00 | 37 |  | Alexander | 1h |  |
| 39 | 36 | Gesamtsystem testen | manual | 0.38d | 2026-12-21 08:00 | 2026-12-21 11:00 | 36, 38, 32 |  | Julian; Alexander; Leon | 9h |  |
| 40 | 37 | M6 System integriert | milestone, manual | 0d | 2026-12-21 11:00 | 2026-12-21 11:00 | 39 |  |  |  |  |
| 42 | 38 | Modul- & Funktionstests durchführen | manual | 0.25d | 2027-01-08 08:00 | 2027-01-11 09:00 | 40 |  | Leon | 2h |  |
| 43 | 39 | Genauigkeitstest durchführen | manual | 0.25d | 2027-01-08 08:00 | 2027-01-11 09:00 | 40 |  | Alexander | 2h |  |
| 44 | 40 | Fehler beheben & optimieren | manual | 0.25d | 2027-01-11 09:00 | 2027-01-11 11:00 | 42, 43 |  | Julian | 2h |  |
| 45 | 41 | Testprotokoll erstellen | manual | 0.12d | 2027-01-15 08:00 | 2027-01-15 09:00 | 44 |  | Leon | 1h |  |
| 46 | 42 | M7 Systemtest abgeschlossen | milestone, manual | 0d | 2027-01-18 08:00 | 2027-01-18 08:00 | 45 |  |  |  |  |
| 48 | 43 | Technische Dokumentation erstellen | manual | 0.38d | 2027-01-11 09:00 | 2027-01-15 09:00 | 40 |  | Alexander | 3h |  |
| 49 | 44 | Benutzeranleitung erstellen | manual | 0.25d | 2027-01-11 09:00 | 2027-01-11 11:00 | 40 |  | Leon | 2h |  |
| 50 | 45 | Pflichtenheft & Statusbericht aktualisieren | manual | 0.12d | 2027-01-18 08:00 | 2027-01-18 09:00 | 45 |  | Julian | 1h |  |
| 51 | 46 | M8 Dokumentation abgeschlossen | milestone, manual | 0d | 2027-01-22 09:00 | 2027-01-22 09:00 | 48, 49, 50 |  |  |  |  |
| 52 | 47 | Endpräsentation vorbereiten & halten | manual | 0.62d | 2027-01-18 09:00 | 2027-01-25 10:00 | 46 |  | Julian; Alexander; Leon | 15h |  |
| 53 | 48 | Projekt übergeben | manual | 0.12d | 2027-01-25 10:00 | 2027-01-25 11:00 | 52, 51 |  | Julian | 1h |  |
| 54 | 49 | M9 Projektabschluss | milestone, manual | 0d | 2027-01-25 11:00 | 2027-01-25 11:00 | 53 |  |  |  |  |
